# CSM 3.2

Schedule from MS Project, 2006-04-20 to 2006-11-20, A marks actual dates.
NCI

## Calendars

- Standard: Mon-Fri 08:00-12:00, 13:00-17:00; Sat-Sun off. Exceptions (off unless hours are given): 2006-05-29.

## Resources

| Resource |
| --- |
| Charles |
| Avinash |
| Kunal |
| Orlando |
| Steven |
| Denise |
| BioPharm |
| Kuanl |
| Steve |

## Schedule

| ID | WBS | Task | Type | Duration | Start | Finish | Predecessors | Complete | Remaining | Total slack | Free slack | Constraint | Resources | Work | Actual work |
| --- | --- | --- | --- | --- | --- | --- | --- | --- | --- | --- | --- | --- | --- | --- | --- |
| 1 | 1 | **CSM 3.2** |  | 151d? | 2006-04-20 A | 2006-11-20 |  | 13% | 131.75d? | 0d |  |  |  | 3046.4h | 507.6h |
| 2 | 1.1 | **Elaboration** |  | 57d? | 2006-04-20 A | 2006-07-11 |  | 33% | 38.24d? | 94d |  |  |  | 1320.8h | 507.6h |
| 3 | 1.1.1 | **Iteration 1** |  | 34d? | 2006-04-20 A | 2006-06-07 |  | 68% | 10.79d? | 117d |  |  |  | 638.8h | 507.6h |
| 4 | 1.1 | Kick off | milestone | 0d | 2006-04-20 A | 2006-04-20 A |  | 100% |  |  |  | start no earlier than 2006-04-20 | Denise; Charles; Orlando; Steven; Avinash |  |  |
| 5 | 1.1.1.2 | **21 CFR Part 11** |  | 34d | 2006-04-20 A | 2006-06-07 |  | 35% | 22.1d | 117d |  |  |  | 205.6h | 173.6h |
| 6 | 1.1.1.2.1 | Preperation |  | 7d | 2006-04-20 A | 2006-04-28 A |  | 100% |  |  |  |  | Charles [10%]; Orlando; Steven; Kunal | 173.6h | 173.6h |
| 7 | 1.1.1.2.2 | Kickoff Meeting With Biopharm | milestone | 0d | 2006-05-01 A | 2006-05-01 A |  | 100% |  |  |  | start no earlier than 2006-05-01 | Charles [10%]; Orlando; Steven; Kunal |  |  |
| 8 | 1.1.1.2.3 | Biopharm resources allocated | milestone | 0d | 2006-05-15 | 2006-05-15 |  |  |  | 119d | 0d | start no earlier than 2006-05-15 | BioPharm |  |  |
| 9 | 1.1.1.2.4 | Deliver Materials |  | 3d | 2006-05-17 | 2006-05-19 | 8FS+2d |  |  | 119d | 0d |  | Steven | 24h |  |
| 10 | 1.1.1.2.5 | Provide Validation Support |  | 10d | 2006-05-22 | 2006-06-07 | 9 |  |  | 117d |  |  | Steven [10%] | 8h |  |
| 11 | 1.1.1.3 | **Project Scope** |  | 20d? | 2006-05-01 A | 2006-05-26 |  | 88% | 2.38d? | 25.05d |  |  |  | 382h | 334h |
| 12 | 1.1.1.3.1 | Create/Revise Candidate Requirements Document |  | 4d | 2006-05-01 A | 2006-05-04 A | 6 | 100% |  |  |  |  | Charles [10%]; Steven; Orlando; Kunal | 99.2h | 99.2h |
| 13 | 1.2 | Revised Scope w/Product Manager | milestone | 0d | 2006-05-04 A | 2006-05-04 A |  | 100% |  |  |  |  | Charles; Avinash |  |  |
| 14 | 1.1.1.3.3 | Define Elaboration Task Plan |  | 1d? | 2006-05-05 A | 2006-05-05 A | 12 | 100% |  |  |  |  | Charles [10%]; Orlando; Kunal; Steven | 24.8h | 24.8h |
| 15 | 1.1.1.3.4 | Create/Update Scope Document |  | 15d | 2006-05-08 A | 2006-05-26 A | 14 | 100% |  |  |  |  | Charles [10%] | 12h | 12h |
| 16 | 1.1.1.3.5 | Obtain Changes/Fixes from BMS and map to current scope |  | 4d | 2006-05-15 A | 2006-05-18 A |  | 100% |  |  |  | start no earlier than 2006-05-15 | Steven [90%] | 28.8h | 28.8h |
| 17 | 1.1.1.3.6 | **LOE/Requirements Gathering** |  | 14d | 2006-05-08 A | 2006-05-25 | 14 | 77% | 3.17d | 26.05d | 0d |  |  | 217.2h | 169.2h |
| 18 | 1.1.1.3.6.1 | Obtain exact JDK version for next release |  | 0.25d | 2006-05-08 A | 2006-05-08 A |  | 100% |  |  |  |  | Kunal | 2h | 2h |
| 19 | 1.1.1.3.6.2 | High Level Diagram of Grid-CSM Integration |  | 2d | 2006-05-08 A | 2006-05-10 A | 18 | 100% |  |  |  |  | Kunal | 16h | 16h |
| 20 | 1.1.1.3.6.3 | High Level Diagram of CSM Web Service |  | 1d | 2006-05-10 A | 2006-05-11 A | 19 | 100% |  |  |  |  | Kunal | 8h | 8h |
| 21 | 1.1.1.3.6.4 | Deliver Diagrams to Avinash | milestone | 0d | 2006-05-11 A | 2006-05-11 A | 20 | 100% |  |  |  |  | Kuanl |  |  |
| 22 | 1.1.1.3.6.5 | IMF Presentation |  | 2d | 2006-05-11 A | 2006-05-15 A | 21 | 100% |  |  |  |  | Kunal | 16h | 16h |
| 23 | 1.1.1.3.6.6 | Estimate Tying User to Application |  | 1d | 2006-05-15 A | 2006-05-16 A | 22 | 100% |  |  |  |  | Kunal | 8h | 8h |
| 24 | 1.1.1.3.6.7 | Estimate for Grid Integration/ Project Scope Doc |  | 6d | 2006-05-16 | 2006-05-24 | 23 |  |  | 39.8d |  |  | Kunal | 48h |  |
| 25 | 1.1.1.3.6.8 | Meet with Apps for Performance Requirements |  | 0.25d | 2006-05-11 A | 2006-05-11 A |  | 100% |  |  |  | start no earlier than 2006-05-11 | Kunal; Orlando | 4h | 4h |
| 26 | 1.1.1.3.6.9 | Prototyp Generic LDAP |  | 2.5d | 2006-05-08 A | 2006-05-10 A |  | 100% |  |  |  |  | Orlando | 20h | 20h |
| 27 | 1.1.1.3.6.10 | Estimate Auth Policy Caching |  | 3d | 2006-05-10 A | 2006-05-15 A | 26 | 100% |  |  |  |  | Orlando | 24h | 24h |
| 28 | 1.1.1.3.6.11 | Estimate CLM Logging to text file and Log Viewer Mods |  | 2d | 2006-05-15 A | 2006-05-17 A | 27 | 100% |  |  |  |  | Orlando | 16h | 16h |
| 29 | 1.1.1.3.6.12 | Estimate BMS Webservice Integration |  | 2.5d | 2006-05-17 A | 2006-05-19 A | 28 | 100% |  |  |  |  | Orlando | 20h | 20h |
| 30 | 1.1.1.3.6.13 | Estimate BMS Integration Work |  | 4d | 2006-05-22 A | 2006-05-25 A | 29 | 100% |  |  |  |  | Orlando; Charles [10%] | 35.2h | 35.2h |
| 31 | 1.1.1.4 | NCICB Management Review Complete | milestone | 0d | 2006-05-17 A | 2006-05-17 A |  | 100% |  |  |  | start no earlier than 2006-05-17 |  |  |  |
| 32 | 1.1.1.5 | Update Scope |  | 2.95d | 2006-05-26 | 2006-05-31 | 17 |  |  | 56.05d | 0d |  | Charles [10%]; Orlando; Kunal | 49.6h |  |
| 33 | 1.1.1.6 | User Feedback Sessions Complete | milestone | 0d | 2006-05-26 A | 2006-05-26 A |  | 100% |  |  |  | start no earlier than 2006-05-26 |  |  |  |
| 34 | 1.1.1.7 | Final Scope Document Complete | milestone | 0d | 2006-05-29 | 2006-05-29 |  |  |  | 122d | 0d | start no earlier than 2006-05-29 |  |  |  |
| 35 | 1.1.1.8 | Revise Task Plan |  | 2d | 2006-05-30 | 2006-05-31 | 34 |  |  | 122d |  |  | Charles [10%] | 1.6h |  |

| ID | WBS | Task | Type | Duration | Start | Finish | Predecessors | Total slack | Free slack | Constraint | Resources | Work |
| --- | --- | --- | --- | --- | --- | --- | --- | --- | --- | --- | --- | --- |
| 36 | 1.1.2 | **Iteration 2** |  | 22d | 2006-05-19 | 2006-06-21 |  | 63.5d |  |  |  | 263.6h |
| 37 | 1.1.2.1 | **Detail Requirements** |  | 15.95d | 2006-05-19 | 2006-06-12 |  | 63.5d | 0d |  |  | 245.2h |
| 38 | 1.1.2.1.1 | **Define Use Cases** |  | 15.95d | 2006-05-19 | 2006-06-12 |  | 63.5d |  |  |  | 245.2h |
| 39 | 1.1.2.1.1.1 | **UPT** |  | 9.5d | 2006-05-19 | 2006-06-02 |  | 117.5d |  |  |  | 60.4h |
| 40 | 1.1.2.1.1.1.1 | Write |  | 5d | 2006-05-19 | 2006-05-25 | 16 | 119.5d | 0d |  | Steven | 40h |
| 41 | 1.1.2.1.1.1.2 | Review |  | 1d | 2006-05-26 | 2006-05-31 | 40 | 117.5d | 0d |  | Steven; Charles [10%] | 4.4h |
| 42 | 1.1.2.1.1.1.3 | Update per Review |  | 2d | 2006-05-31 | 2006-06-02 | 41 | 117.5d |  |  | Steven | 16h |
| 43 | 1.1.2.1.1.2 | **CLM** |  | 4d | 2006-05-31 | 2006-06-06 |  | 115.05d |  |  |  | 40.2h |
| 44 | 1.1.2.1.1.2.1 | Write |  | 3d | 2006-05-31 | 2006-06-05 | 32 | 111.05d | 0d |  | Orlando | 24h |
| 45 | 1.1.2.1.1.2.2 | Review |  | 0.25d | 2006-06-05 | 2006-06-06 | 44 | 111.05d | 0d |  | Orlando; Steve; Charles [10%] | 4.2h |
| 46 | 1.1.2.1.1.2.3 | Update per Review |  | 0.75d | 2006-06-06 | 2006-06-06 | 45 | 111.05d |  |  | Orlando; Steve | 12h |
| 47 | 1.1.2.1.1.3 | **Web Service** |  | 4d | 2006-05-31 | 2006-06-06 |  | 55.55d | 0d |  |  | 40.2h |
| 48 | 1.1.2.1.1.3.1 | Write |  | 3d | 2006-05-31 | 2006-06-05 | 32 | 56.05d | 0d |  | Kunal | 24h |
| 49 | 1.1.2.1.1.3.2 | Review |  | 0.25d | 2006-06-05 | 2006-06-06 | 48 | 56.05d | 0d |  | Kunal; Steve; Charles [10%] | 4.2h |
| 50 | 1.1.2.1.1.3.3 | Update per Review |  | 0.75d | 2006-06-06 | 2006-06-06 | 49 | 56.05d |  |  | Kunal; Steve | 12h |
| 51 | 1.1.2.1.1.4 | **CSM APIs** |  | 7d | 2006-05-31 | 2006-06-09 |  | 112.05d | 0d |  |  | 64.2h |
| 52 | 1.1.2.1.1.4.1 | Write |  | 6d | 2006-05-31 | 2006-06-08 | 32 | 112.05d | 0d |  | Orlando | 48h |
| 53 | 1.1.2.1.1.4.2 | Review |  | 0.25d | 2006-06-08 | 2006-06-09 | 52 | 112.05d | 0d |  | Orlando; Steve; Charles [10%] | 4.2h |
| 54 | 1.1.2.1.1.4.3 | Update per Review |  | 0.75d | 2006-06-09 | 2006-06-09 | 53 | 112.05d |  |  | Orlando; Steve | 12h |
| 55 | 1.1.2.1.1.5 | **- Performance Enhancements** |  | 4d | 2006-06-06 | 2006-06-12 |  | 55.55d | 0d |  |  | 40.2h |
| 56 | 1.1.2.1.1.5.1 | Write |  | 3d | 2006-06-06 | 2006-06-09 | 47 | 55.55d | 0d |  | Kunal | 24h |
| 57 | 1.1.2.1.1.5.2 | Review |  | 0.25d | 2006-06-09 | 2006-06-12 | 56 | 55.55d | 0d |  | Kunal; Steve; Charles [10%] | 4.2h |
| 58 | 1.1.2.1.1.5.3 | Update per Review |  | 0.75d | 2006-06-12 | 2006-06-12 | 57 | 55.55d | 0d |  | Kunal; Steve | 12h |
| 59 | 1.1.2.2 | General Requirements Phase Complete | milestone | 0d | 2006-06-07 | 2006-06-07 |  | 118d |  | start no earlier than 2006-06-07 |  |  |
| 60 | 1.1.2.3 | Revise Scope Document |  | 1d | 2006-06-12 | 2006-06-13 | 37 | 111.05d | 0d |  | Charles [10%] | 0.8h |
| 61 | 1.1.2.4 | Revised Scope Document Complete | milestone | 0d | 2006-06-08 | 2006-06-08 |  | 117d |  | start no earlier than 2006-06-08 |  |  |
| 62 | 1.1.2.5 | Update CSM Model |  | 2d | 2006-06-09 | 2006-06-13 | 51 | 113.05d |  |  | Orlando | 16h |
| 63 | 1.1.2.6 | UML Model Changes Approved | milestone | 0d | 2006-06-09 | 2006-06-09 |  | 93d | 0d | start no earlier than 2006-06-09 | Orlando |  |
| 64 | 1.1.2.7 | Revise Task Plan |  | 2d | 2006-06-13 | 2006-06-15 | 60 | 111.05d |  |  | Charles [10%] | 1.6h |
| 65 | 1.1.2.8 | Project Manager Project Plan Complete | milestone | 0d | 2006-06-12 | 2006-06-12 |  | 115d |  | start no earlier than 2006-06-12 |  |  |
| 66 | 1.1.2.9 | Product Manager Project Plan Complete | milestone | 0d | 2006-06-14 | 2006-06-14 |  | 113d |  | start no earlier than 2006-06-14 |  |  |
| 67 | 1.1.2.10 | caCore Project Plan Complete | milestone | 0d | 2006-06-21 | 2006-06-21 |  | 108d |  | start no earlier than 2006-06-21 |  |  |

| ID | WBS | Task | Type | Duration | Start | Finish | Predecessors | Total slack | Free slack | Constraint | Resources | Work |
| --- | --- | --- | --- | --- | --- | --- | --- | --- | --- | --- | --- | --- |
| 68 | 1.1.3 | **Iteration 3** |  | 22d | 2006-06-09 | 2006-07-11 |  | 28d |  |  |  | 418.4h |
| 69 | 1.1.3.1 | Review Testability of Requirements |  | 4d | 2006-06-12 | 2006-06-16 | 58 | 55.55d | 0d |  | Steven | 32h |
| 70 | 1.1.3.2 | Test Plan Development |  | 12d | 2006-06-16 | 2006-07-04 | 69 | 55.55d | 0d |  | Steven | 96h |
| 71 | 1.1.3.3 | **Prototype** |  | 10d | 2006-06-09 | 2006-06-22 |  | 28d |  |  |  | 120h |
| 72 | 1.1.3.3.1 | Auth Caching |  | 5d | 2006-06-12 | 2006-06-19 | 55 | 104.05d | 0d |  | Kunal | 40h |
| 73 | 1.1.3.3.2 | Open/Active Directory LDAP |  | 5d | 2006-06-09 | 2006-06-15 | 63 | 93d | 0d |  | Orlando | 40h |
| 74 | 1.1.3.3.3 | Schema Support for SQL Server |  | 5d | 2006-06-16 | 2006-06-22 | 73 | 93d | 0d |  | Orlando | 40h |
| 75 | 1.1.3.4 | Performance Design |  | 5d | 2006-06-19 | 2006-06-26 | 72 | 104.05d |  |  | Kunal | 40h |
| 76 | 1.1.3.5 | CSM & CLM Design docs |  | 7d | 2006-06-23 | 2006-07-03 | 74 | 93d | 0d |  | Orlando | 56h |
| 77 | 1.1.3.6 | CSM SAD |  | 3d | 2006-06-26 | 2006-06-29 | 75 | 38.05d | 0d |  | Kunal | 24h |
| 78 | 1.1.3.7 | Design Reviews |  | 3d | 2006-06-29 | 2006-07-04 | 77 | 38.05d | 0d |  | Orlando; Kunal; Charles [10%] | 50.4h |
| 79 | 1.1.3.8 | Design Documents Posted/Review Completed | milestone | 0d | 2006-07-11 | 2006-07-11 |  | 59d | 0d | start no earlier than 2006-07-11 |  |  |
| 80 | 1.2 | **Construction** |  | 85.05d | 2006-07-04 | 2006-10-31 |  | 13d |  |  |  | 1725.6h |
| 81 | 1.2.1 | Production Support |  | 80d | 2006-07-12 | 2006-10-31 | 79 | 13d |  | start no earlier than 2006-07-12 | Orlando [15%]; Kunal [15%]; Steven [15%] | 273.6h |
| 82 | 1.2.2 | **Iteration 1** |  | 18.5d | 2006-07-04 | 2006-07-31 |  | 26.05d |  |  |  | 404h |
| 83 | 1.2.2.1 | **Hibernate 3.1 Upgrade/JDK Backwards Compatibility/MySQL Upgrade Test** |  | 6d | 2006-07-04 | 2006-07-12 |  | 82.05d |  |  |  | 48h |
| 84 | 1.2.2.1.1 | Development |  | 5d | 2006-07-04 | 2006-07-11 | 78 | 82.05d | 0d |  | Orlando | 40h |
| 85 | 1.2.2.1.2 | Regression Testing |  | 1d | 2006-07-11 | 2006-07-12 | 84 | 82.05d | 0d |  | Orlando | 8h |
| 86 | 1.2.2.2 | **Open LDAP/Active Directory Authorization** |  | 4d | 2006-07-12 | 2006-07-18 |  | 82.05d |  |  |  | 32h |
| 87 | 1.2.2.2.1 | Design |  | 1d | 2006-07-12 | 2006-07-13 | 85 | 82.05d | 0d |  | Orlando | 8h |
| 88 | 1.2.2.2.2 | Development/Unit Test |  | 3d | 2006-07-13 | 2006-07-18 | 87 | 82.05d | 0d |  | Orlando | 24h |
| 89 | 1.2.2.3 | **Auth Policy Caching** |  | 14d | 2006-07-04 | 2006-07-24 |  | 26.05d |  |  |  | 112h |
| 90 | 1.2.2.3.1 | Design |  | 1d | 2006-07-04 | 2006-07-05 | 78 | 38.05d | 0d |  | Kunal | 8h |
| 91 | 1.2.2.3.2 | Development/Unit Testing |  | 13d | 2006-07-05 | 2006-07-24 | 90 | 38.05d | 0d |  | Kunal | 104h |

| ID | WBS | Task | Type | Duration | Start | Finish | Predecessors | Total slack | Free slack | Resources | Work |
| --- | --- | --- | --- | --- | --- | --- | --- | --- | --- | --- | --- |
| 92 | 1.2.2.4 | **BMS Web Service Integration** |  | 6d | 2006-07-18 | 2006-07-26 |  | 82.05d |  |  | 48h |
| 93 | 1.2.2.4.1 | Design |  | 1d | 2006-07-18 | 2006-07-19 | 88 | 82.05d | 0d | Orlando | 8h |
| 94 | 1.2.2.4.2 | Development/Unit Test |  | 5d | 2006-07-19 | 2006-07-26 | 93 | 82.05d | 0d | Orlando | 40h |
| 95 | 1.2.2.5 | Components Deployed on Dev Server | milestone | 0d | 2006-07-26 | 2006-07-26 | 94 | 82.05d |  | Kunal; Orlando |  |
| 96 | 1.2.2.6 | **Regression Test Complete Code Coverage** |  | 12.5d | 2006-07-04 | 2006-07-21 |  | 79.55d |  |  | 52h |
| 97 | 1.2.2.6.1 | Implementation |  | 6.5d | 2006-07-04 | 2006-07-21 | 70 | 48.55d | 0d | Steven | 52h |
| 98 | 1.2.2.7 | QA Test |  | 6d | 2006-07-21 | 2006-07-31 | 97 | 48.55d | 0d | Steven | 48h |
| 99 | 1.2.2.8 | Testing Support |  | 4d | 2006-07-24 | 2006-07-28 | 91 | 38.05d | 0d | Kunal; Orlando | 64h |
| 100 | 1.2.3 | **Iteration 2** |  | 54d | 2006-07-28 | 2006-10-12 | 99 | 26.05d |  |  | 1048h |
| 101 | 1.2.3.1 | **Application Specific UPT and APIs** |  | 7d | 2006-07-28 | 2006-08-08 |  | 28.05d |  |  | 56h |
| 102 | 1.2.3.1.1 | Design |  | 2d | 2006-07-28 | 2006-08-01 | 99 | 38.05d | 0d | Orlando | 16h |
| 103 | 1.2.3.1.2 | Development/Unit Test |  | 5d | 2006-08-01 | 2006-08-08 | 102 | 38.05d | 0d | Orlando | 40h |
| 104 | 1.2.3.2 | **Improve Exception Handling** |  | 5d | 2006-08-08 | 2006-08-15 |  | 28.05d |  |  | 40h |
| 105 | 1.2.3.2.1 | Development/Unit Test |  | 5d | 2006-08-08 | 2006-08-15 | 103 | 38.05d | 0d | Orlando | 40h |
| 106 | 1.2.3.3 | **Performance Enhancements** |  | 9d | 2006-07-28 | 2006-08-10 |  | 26.05d |  |  | 72h |
| 107 | 1.2.3.3.1 | **Fix Update Methods** |  | 3d | 2006-07-28 | 2006-08-02 |  | 26.05d |  |  | 24h |
| 108 | 1.2.3.3.1.1 | Development/Unit Test |  | 3d | 2006-07-28 | 2006-08-02 | 99 | 51.05d | 0d | Kunal | 24h |
| 109 | 1.2.3.3.2 | **Add Protection Element Type and Retrieve All Accessible Values by Type Method** |  | 6d | 2006-08-02 | 2006-08-10 |  | 26.05d |  |  | 48h |
| 110 | 1.2.3.3.2.1 | Design |  | 2d | 2006-08-02 | 2006-08-04 | 108 | 51.05d | 0d | Kunal | 16h |
| 111 | 1.2.3.3.2.2 | Development |  | 4d | 2006-08-04 | 2006-08-10 | 110 | 51.05d | 0d | Kunal | 32h |
| 112 | 1.2.3.4 | **Grid SAML Assertion Support** |  | 20d | 2006-08-10 | 2006-09-07 |  | 26.05d |  |  | 160h |
| 113 | 1.2.3.4.1 | Design |  | 5d | 2006-08-10 | 2006-08-17 | 111 | 51.05d | 0d | Kunal | 40h |
| 114 | 1.2.3.4.2 | Development |  | 15d | 2006-08-17 | 2006-09-07 | 113 | 51.05d |  | Kunal | 120h |
| 115 | 1.2.3.5 | **Secure SDK interfaces** |  | 10d | 2006-09-07 | 2006-09-21 |  | 26.05d |  |  | 80h |
| 116 | 1.2.3.5.1 | Design |  | 2d | 2006-09-07 | 2006-09-11 | 114 | 26.05d | 0d | Kunal | 16h |
| 117 | 1.2.3.5.2 | Development |  | 8d | 2006-09-11 | 2006-09-21 | 116 | 26.05d | 0d | Kunal | 64h |

| ID | WBS | Task | Type | Duration | Start | Finish | Predecessors | Total slack | Free slack | Constraint | Resources | Work |
| --- | --- | --- | --- | --- | --- | --- | --- | --- | --- | --- | --- | --- |
| 118 | 1.2.3.6 | **BMS Code Integration** |  | 15d | 2006-08-15 | 2006-09-05 |  | 28.05d |  |  |  | 120h |
| 119 | 1.2.3.6.1 | Design |  | 2d | 2006-08-15 | 2006-08-17 | 105 | 28.05d | 0d |  | Orlando | 16h |
| 120 | 1.2.3.6.2 | Development |  | 13d | 2006-08-17 | 2006-09-05 | 119 | 28.05d | 0d |  | Orlando | 104h |
| 121 | 1.2.3.7 | **Defect Fixes** |  | 17d | 2006-09-05 | 2006-09-28 |  | 26.05d | 0d |  |  | 160h |
| 122 | 1.2.3.7.1 | Development/Unit Test |  | 15d | 2006-09-05 | 2006-09-26 | 120 | 28.05d | 2d |  | Orlando | 120h |
| 123 | 1.2.3.7.2 | Development/Unit Test |  | 5d | 2006-09-21 | 2006-09-28 | 117 | 26.05d | 0d |  | Kunal | 40h |
| 124 | 1.2.3.8 | Deploy Components to Dev Server | milestone | 0d | 2006-09-28 | 2006-09-28 | 122, 123 | 36.05d |  |  | Orlando; Kunal |  |
| 125 | 1.2.3.9 | **Testing** |  | 45d | 2006-08-10 | 2006-10-12 |  | 26.05d |  |  |  | 360h |
| 126 | 1.2.3.9.1 | Load & Component Test Development |  | 15d | 2006-08-10 | 2006-08-31 | 111 | 46.05d | 20d |  | Steven | 120h |
| 127 | 1.2.3.9.2 | QA Test Components |  | 10d | 2006-09-28 | 2006-10-12 | 126, 121 | 26.05d |  |  | Steven | 80h |
| 128 | 1.2.3.9.3 | Test Support |  | 10d | 2006-09-28 | 2006-10-12 | 121 | 26.05d |  |  | Orlando; Kunal | 160h |
| 129 | 1.2.4 | QA Cycling/Integration Testing Complete (QA) | milestone | 0d | 2006-09-26 | 2006-09-26 |  | 39d |  | start no earlier than 2006-09-26 |  |  |
| 130 | 1.2.5 | Internal System Testing Complete (QA Tier) | milestone | 0d | 2006-10-16 | 2006-10-16 |  | 25d |  | start no earlier than 2006-10-16 |  |  |
| 131 | 1.2.6 | Release Candidate pushed to Staget Tier | milestone | 0d | 2006-10-17 | 2006-10-17 |  | 24d |  | start no earlier than 2006-10-17 |  |  |
| 132 | 1.2.7 | UAT Complete (Stage Tier) | milestone | 0d | 2006-10-25 | 2006-10-25 |  | 18d |  | start no earlier than 2006-10-25 |  |  |
| 133 | 1.3 | **Transition** |  | 7d | 2006-11-09 | 2006-11-20 |  | 0d |  |  |  |  |
| 134 | 1.3.1 | Final Release Ready | milestone | 0d | 2006-11-09 | 2006-11-09 |  | 7d |  | start no earlier than 2006-11-09 |  |  |
| 135 | 1.3.2 | Internal Staging Regression Testing Complete | milestone | 0d | 2006-11-17 | 2006-11-17 |  | 1d |  | start no earlier than 2006-11-17 |  |  |
| 136 | 1.3.3 | Final Release | milestone | 0d | 2006-11-20 | 2006-11-20 |  | 0d |  | start no earlier than 2006-11-20 |  |  |
